# Workshop Handmade - Gửi yêu thương

Schedule from MS Project, 2026-03-29 to 2026-04-20, status date 2026-04-12, costs in ₫, A marks actual dates.
Đại học UEH

## Calendars

- Standard: Mon-Sun 07:30-11:30, 13:00-17:00.

## Resources

| Resource | Unit | Rate | Notes |
| --- | --- | --- | --- |
| GV.Phạm Thị Thanh Tâm |  |  |  |
| Khánh Huyền |  |  |  |
| Khánh Linh |  |  |  |
| Yến Vy |  |  |  |
| Quỳnh Trâm |  |  |  |
| Ngọc Phượng |  |  |  |
| Thu Thảo |  |  |  |
| Phương Nguyên |  |  |  |
| Gia Hân |  |  |  |
| Ốp điện thoại trong suốt | Cái | 14000 |  |
| Charm trang trí | Gói | 30000 |  |
| Sticker trang trí | Set | 18000 |  |
| Sticker chữ | Set | 11000 | Lược bỏ |
| Keo nến | Cây | 1000 | Lược bỏ |
| Khay đựng charm | Cái | 4500 |  |
| Kẹp gắp | Cái | 9000 |  |
| Quà tặng (Cơm hộp) | Phần | 40000 | Lược bỏ |
| Màu vẽ | Hộp | 20350 | Phát sinh |
| Cọ vẽ | Cây | 1500 | Phát sinh |
| Khay pha màu | Cái | 4330 | Phát sinh |
| Keo dán | Tấm | 6900 | Phát sinh |
| Phần quà | Suất | 92000 | Phát sinh |

## Schedule

| ID | WBS | Task | Type | Duration | Start | Finish | Predecessors | Complete | Actual finish | Baseline start | Baseline finish | Baseline duration | Constraint | Resources | Work | Actual work | Cost | Baseline cost | Actual cost |
| --- | --- | --- | --- | --- | --- | --- | --- | --- | --- | --- | --- | --- | --- | --- | --- | --- | --- | --- | --- |
| 1 | 1 | **Khởi động và chuẩn bị dự án** |  | 3d | 2026-03-29 08:00 A | 2026-04-01 08:00 A |  | 100% |  | 2026-03-29 08:00 | 2026-04-01 08:00 | 3d |  |  | 52h | 52h |  |  |  |
| 2 | 1.1 | **Chuẩn bị nền tảng dự án** |  | 1d | 2026-03-29 08:00 A | 2026-03-30 08:00 |  | 100% | 2026-03-29 17:00 | 2026-03-29 08:00 | 2026-03-30 08:00 | 1d |  |  | 16h | 16h |  |  |  |
| 3 | 1.1.1 | Lập fanpage dự án |  | 0.5d | 2026-03-29 08:00 A | 2026-03-29 17:00 A |  | 100% |  | 2026-03-29 08:00 | 2026-03-29 13:30 | 0.5d | finish no earlier than 2026-03-29 17:00 | Quỳnh Trâm; Yến Vy | 8h | 8h |  |  |  |
| 4 | 1.1.2 | Thiết kế logo và banner dự án |  | 0.5d | 2026-03-29 08:00 A | 2026-03-29 17:00 A | 3 | 100% |  | 2026-03-29 13:30 | 2026-03-30 08:00 | 0.5d | finish no earlier than 2026-03-29 17:00 | Quỳnh Trâm; Yến Vy | 8h | 8h |  |  |  |
| 5 | 1.2 | **Chuẩn bị nội dung truyền thông** |  | 1d | 2026-03-30 08:00 A | 2026-03-31 08:00 A | 2 | 100% |  | 2026-03-30 08:00 | 2026-03-31 08:00 | 1d |  |  | 16h | 16h |  |  |  |
| 6 | 1.2.1 | Viết nội dung giới thiệu dự án |  | 0.5d | 2026-03-30 08:00 A | 2026-03-30 13:30 A |  | 100% |  | 2026-03-30 08:00 | 2026-03-30 13:30 | 0.5d |  | Quỳnh Trâm; Yến Vy | 8h | 8h |  |  |  |
| 7 | 1.2.2 | Thiết kế poster truyền thông |  | 0.5d | 2026-03-30 13:30 A | 2026-03-31 08:00 A | 6 | 100% |  | 2026-03-30 13:30 | 2026-03-31 08:00 | 0.5d |  | Quỳnh Trâm; Yến Vy | 8h | 8h |  |  |  |
| 8 | 1.3 | **Chuẩn bị hệ thống đăng ký và gây quỹ** |  | 1d | 2026-03-31 08:00 A | 2026-04-01 08:00 A | 5 | 100% |  | 2026-03-31 08:00 | 2026-04-01 08:00 | 1d |  |  | 20h | 20h |  |  |  |
| 9 | 1.3.1 | Thiết kế Google Form đăng ký workshop và kêu gọi tài trợ |  | 0.5d | 2026-03-31 08:00 A | 2026-03-31 13:30 A |  | 100% |  | 2026-03-31 08:00 | 2026-03-31 13:30 | 0.5d |  | Quỳnh Trâm; Yến Vy | 8h | 8h |  |  |  |
| 10 | 1.3.2 | Kiểm tra và hoàn thiện form đăng ký |  | 0.5d | 2026-03-31 13:30 A | 2026-04-01 08:00 A | 9 | 100% |  | 2026-03-31 13:30 | 2026-04-01 08:00 | 0.5d |  | Quỳnh Trâm; Yến Vy; Khánh Linh | 12h | 12h |  |  |  |
| 11 | 2 | **Đăng ký tham gia workshop và gây quỹ** |  | 4.5d | 2026-04-01 08:00 A | 2026-04-05 13:30 A | 1 | 100% |  | 2026-04-01 08:00 | 2026-04-05 13:30 | 4.5d |  |  | 84h | 84h |  |  |  |
| 12 | 2.1 | **Mở đăng ký workshop và gây quỹ** |  | 3d | 2026-04-01 08:00 A | 2026-04-04 08:00 A |  | 100% |  | 2026-04-01 08:00 | 2026-04-04 08:00 | 3d |  |  | 48h | 48h |  |  |  |
| 13 | 2.1.1 | Đăng tải form đăng ký và kêu gọi tài trợ lên fanpage |  | 0.5d | 2026-04-01 08:00 A | 2026-04-01 13:30 A |  | 100% |  | 2026-04-01 08:00 | 2026-04-01 13:30 | 0.5d |  | Quỳnh Trâm; Yến Vy | 8h | 8h |  |  |  |
| 14 | 2.1.2 | Truyền thông để thu hút người tham gia |  | 2.5d | 2026-04-01 13:30 A | 2026-04-04 08:00 A | 13 | 100% |  | 2026-04-01 13:30 | 2026-04-04 08:00 | 2.5d |  | Quỳnh Trâm; Yến Vy | 40h | 40h |  |  |  |
| 15 | 2.1.3 | Đóng form đăng ký và kết thúc kêu gọi tài trợ | milestone | 0d | 2026-04-04 08:00 A | 2026-04-04 08:00 A | 14 | 100% |  | 2026-04-04 08:00 | 2026-04-04 08:00 | 0d |  |  |  |  |  |  |  |
| 16 | 2.2 | **Quản lý đăng ký và quỹ tài trợ** |  | 1.5d | 2026-04-04 08:00 A | 2026-04-05 13:30 A | 12 | 100% |  | 2026-04-04 08:00 | 2026-04-05 13:30 | 1.5d |  |  | 36h | 36h |  |  |  |
| 17 | 2.2.1 | Thu 50% phí tham gia trước khi xác nhận đăng ký |  | 1d | 2026-04-04 08:00 A | 2026-04-05 08:00 A |  | 100% |  | 2026-04-04 08:00 | 2026-04-05 08:00 | 1d |  | Ngọc Phượng; Thu Thảo | 16h | 16h |  |  |  |
| 18 | 2.2.2 | Tổng hợp danh sách người tham gia |  | 0.5d | 2026-04-05 08:00 A | 2026-04-05 13:30 A | 17 | 100% |  | 2026-04-05 08:00 | 2026-04-05 13:30 | 0.5d |  | Quỳnh Trâm; Yến Vy | 8h | 8h |  |  |  |
| 19 | 2.2.3 | Tổng kết quỹ tài trợ |  | 0.5d | 2026-04-05 08:00 A | 2026-04-05 13:30 A | 18SS | 100% |  | 2026-04-05 08:00 | 2026-04-05 13:30 | 0.5d |  | Ngọc Phượng; Thu Thảo; Khánh Huyền | 12h | 12h |  |  |  |
| 20 | 3 | **Chuẩn bị nguyên liệu workshop** |  | 5.5d | 2026-04-05 13:30 A | 2026-04-11 08:00 A | 11 | 100% |  | 2026-04-05 13:30 | 2026-04-11 08:00 | 5.5d |  |  | 96h | 96h | 2,542,350 | 2,000,000 | 2,542,350 |
| 21 | 3.1 | **Chuẩn bị vật liệu** |  | 1.5d | 2026-04-05 13:30 A | 2026-04-07 08:00 A |  | 100% |  | 2026-04-05 13:30 | 2026-04-07 08:00 | 1.5d |  |  | 24h | 24h |  |  |  |
| 22 | 3.1.1 | Lập danh sách nguyên vật liệu và dụng cụ cần mua |  | 0.5d | 2026-04-05 13:30 A | 2026-04-06 08:00 A |  | 100% |  | 2026-04-05 13:30 | 2026-04-06 08:00 | 0.5d |  | Gia Hân; Phương Nguyên | 8h | 8h |  |  |  |
| 23 | 3.1.2 | Tìm nhà cung cấp |  | 1d | 2026-04-06 08:00 A | 2026-04-07 08:00 A | 22 | 100% |  | 2026-04-06 08:00 | 2026-04-07 08:00 | 1d |  | Gia Hân; Phương Nguyên | 16h | 16h |  |  |  |
| 24 | 3.2 | **Mua và kiểm tra** |  | 4d | 2026-04-07 08:00 A | 2026-04-11 08:00 A | 21 | 100% |  | 2026-04-07 08:00 | 2026-04-11 08:00 | 4d |  |  | 72h | 72h | 2,542,350 | 2,000,000 | 2,542,350 |
| 25 | 3.2.1 | Mua nguyên vật liệu và dụng cụ |  | 3d | 2026-04-07 08:00 A | 2026-04-10 08:00 A |  | 100% |  | 2026-04-07 08:00 | 2026-04-10 08:00 | 3d |  | Gia Hân; Phương Nguyên; Charm trang trí [6 Gói]; Keo nến [50 Cây]; Kẹp gắp [10 Cái]; Ốp điện thoại trong suốt [100 Cái]; Sticker chữ [5 Set]; Sticker trang trí [10 Set]; Khay đựng charm [10 Cái]; Cọ vẽ [20 Cây]; Keo dán [10 Tấm]; Khay pha màu [5 Cái]; Màu vẽ [4 Hộp] | 48h | 48h | 2,542,350 | 2,000,000 | 2,542,350 |
| 26 | 3.2.2 | Kiểm tra và phân loại nguyên liệu |  | 1d | 2026-04-10 08:00 A | 2026-04-11 08:00 A | 25 | 100% |  | 2026-04-10 08:00 | 2026-04-11 08:00 | 1d |  | Gia Hân; Khánh Linh; Phương Nguyên | 24h | 24h |  |  |  |

| ID | WBS | Task | Type | Duration | Start | Finish | Predecessors | Complete | Baseline start | Baseline finish | Baseline duration | Resources | Work | Actual work | Cost | Baseline cost | Actual cost |
| --- | --- | --- | --- | --- | --- | --- | --- | --- | --- | --- | --- | --- | --- | --- | --- | --- | --- |
| 27 | 4 | **Tổ chức Workshop Handmade** |  | 2d | 2026-04-11 08:00 A | 2026-04-13 08:00 A | 20 | 100% | 2026-04-11 08:00 | 2026-04-14 08:00 | 3d |  | 128h | 128h |  |  |  |
| 28 | 4.1 | **Workshop – Buổi 1** |  | 1d | 2026-04-11 08:00 A | 2026-04-12 08:00 A |  | 100% | 2026-04-11 08:00 | 2026-04-12 08:00 | 1d |  | 64h | 64h |  |  |  |
| 29 | 4.1.1 | Chuẩn bị workshop – Buổi 1 |  | 0.25d | 2026-04-11 08:00 A | 2026-04-11 10:00 A |  | 100% | 2026-04-11 08:00 | 2026-04-11 10:00 | 0.25d | Gia Hân; Khánh Huyền; Khánh Linh; Ngọc Phượng; Phương Nguyên; Quỳnh Trâm; Thu Thảo; Yến Vy | 16h | 16h |  |  |  |
| 30 | 4.1.2 | Tổ chức workshop – Buổi 1 |  | 0.25d | 2026-04-11 10:00 A | 2026-04-11 13:30 A | 29 | 100% | 2026-04-11 10:00 | 2026-04-11 13:30 | 0.25d | Gia Hân; Khánh Huyền; Khánh Linh; Ngọc Phượng; Phương Nguyên; Quỳnh Trâm; Thu Thảo; Yến Vy | 16h | 16h |  |  |  |
| 31 | 4.1.3 | Tổng hợp sau workshop – Buổi 1 |  | 0.5d | 2026-04-11 13:30 A | 2026-04-12 08:00 A | 30 | 100% | 2026-04-11 13:30 | 2026-04-12 08:00 | 0.5d | Gia Hân; Khánh Huyền; Khánh Linh; Ngọc Phượng; Phương Nguyên; Quỳnh Trâm; Thu Thảo; Yến Vy | 32h | 32h |  |  |  |
| 32 | 4.2 | **Workshop – Buổi 2** |  | 0.5d | 2026-04-12 08:00 A | 2026-04-12 13:30 A | 28 | 100% | 2026-04-12 08:00 | 2026-04-13 08:00 | 1d |  | 32h | 32h |  |  |  |
| 33 | 4.2.1 | Chuẩn bị workshop – Buổi 2 |  | 0.25d | 2026-04-12 08:00 A | 2026-04-12 10:00 A |  | 100% | 2026-04-12 08:00 | 2026-04-12 10:00 | 0.25d | Gia Hân; Khánh Huyền; Khánh Linh; Ngọc Phượng; Phương Nguyên; Quỳnh Trâm; Thu Thảo; Yến Vy | 16h | 16h |  |  |  |
| 34 | 4.2.2 | Tổ chức workshop – Buổi 2 |  | 0.25d | 2026-04-12 10:00 A | 2026-04-12 13:30 A | 33 | 100% | 2026-04-12 10:00 | 2026-04-12 13:30 | 0.25d | Gia Hân; Khánh Huyền; Khánh Linh; Ngọc Phượng; Phương Nguyên; Quỳnh Trâm; Thu Thảo; Yến Vy | 16h | 16h |  |  |  |
| 35 | 4.2.3 | Tổng hợp sau workshop – Buổi 2 | milestone | 0d | 2026-04-12 13:30 A | 2026-04-12 13:30 A | 34 | 100% | 2026-04-12 13:30 | 2026-04-13 08:00 | 0.5d | Gia Hân; Khánh Huyền; Khánh Linh; Ngọc Phượng; Phương Nguyên; Quỳnh Trâm; Thu Thảo; Yến Vy |  |  |  |  |  |
| 36 | 4.3 | **Workshop – Buổi 3** |  | 0.5d | 2026-04-12 13:30 A | 2026-04-13 08:00 A | 32 | 100% | 2026-04-13 08:00 | 2026-04-14 08:00 | 1d |  | 32h | 32h |  |  |  |
| 37 | 4.3.1 | Chuẩn bị workshop – Buổi 3 | milestone | 0d | 2026-04-12 13:30 A | 2026-04-12 13:30 A |  | 100% | 2026-04-13 08:00 | 2026-04-13 10:00 | 0.25d | Gia Hân; Khánh Huyền; Khánh Linh; Ngọc Phượng; Phương Nguyên; Quỳnh Trâm; Thu Thảo; Yến Vy |  |  |  |  |  |
| 38 | 4.3.2 | Tổ chức workshop – Buổi 3 |  | 0.25d | 2026-04-12 13:30 A | 2026-04-12 15:30 A | 37 | 100% | 2026-04-13 10:00 | 2026-04-13 13:30 | 0.25d | Gia Hân; Khánh Huyền; Khánh Linh; Ngọc Phượng; Phương Nguyên; Quỳnh Trâm; Thu Thảo; Yến Vy | 16h | 16h |  |  |  |
| 39 | 4.3.3 | Tổng hợp sau workshop – Buổi 3 và tổng kết lợi nhuận từ workshop |  | 0.25d | 2026-04-12 15:30 A | 2026-04-13 08:00 A | 38 | 100% | 2026-04-13 13:30 | 2026-04-14 08:00 | 0.5d | Gia Hân; Khánh Huyền; Khánh Linh; Ngọc Phượng; Phương Nguyên; Quỳnh Trâm; Thu Thảo; Yến Vy | 16h | 16h |  |  |  |
| 40 | 5 | **Chuẩn bị và phát quà gây quỹ** |  | 2d | 2026-04-13 08:00 A | 2026-04-15 08:00 A | 27 | 100% | 2026-04-14 08:00 | 2026-04-16 08:00 | 2d |  | 116h | 116h | 4,600,000 | 4,000,000 | 4,600,000 |
| 41 | 5.1 | **Chuẩn bị quà** |  | 1d | 2026-04-13 08:00 A | 2026-04-14 08:00 A |  | 100% | 2026-04-14 08:00 | 2026-04-15 08:00 | 1d |  | 52h | 52h | 4,600,000 | 4,000,000 | 4,600,000 |
| 42 | 5.1.1 | Lập ngân sách mua quà |  | 0.25d | 2026-04-13 08:00 A | 2026-04-13 10:00 A |  | 100% | 2026-04-14 08:00 | 2026-04-14 10:00 | 0.25d | Gia Hân; Phương Nguyên | 4h | 4h |  |  |  |
| 43 | 5.1.2 | Mua quà và vật phẩm tặng |  | 0.5d | 2026-04-13 10:00 A | 2026-04-13 15:30 A | 42 | 100% | 2026-04-14 10:00 | 2026-04-14 15:30 | 0.5d | Gia Hân; Khánh Huyền; Khánh Linh; Ngọc Phượng; Phương Nguyên; Quỳnh Trâm; Thu Thảo; Yến Vy; Quà tặng (Cơm hộp) [100 Phần]; Phần quà [50 Suất] | 32h | 32h | 4,600,000 | 4,000,000 | 4,600,000 |
| 44 | 5.1.3 | Đóng gói quà |  | 0.25d | 2026-04-13 15:30 A | 2026-04-14 08:00 A | 43 | 100% | 2026-04-14 15:30 | 2026-04-15 08:00 | 0.25d | Gia Hân; Khánh Huyền; Khánh Linh; Ngọc Phượng; Phương Nguyên; Quỳnh Trâm; Thu Thảo; Yến Vy | 16h | 16h |  |  |  |
| 45 | 5.2 | **Hoạt động từ thiện** |  | 1d | 2026-04-14 08:00 A | 2026-04-15 08:00 A | 41 | 100% | 2026-04-15 08:00 | 2026-04-16 08:00 | 1d |  | 64h | 64h |  |  |  |
| 46 | 5.2.1 | Chuẩn bị vận chuyển |  | 0.5d | 2026-04-14 08:00 A | 2026-04-14 13:30 A |  | 100% | 2026-04-15 08:00 | 2026-04-15 13:30 | 0.5d | Gia Hân; Khánh Huyền; Khánh Linh; Ngọc Phượng; Phương Nguyên; Quỳnh Trâm; Thu Thảo; Yến Vy | 32h | 32h |  |  |  |
| 47 | 5.2.2 | Phát quà cho người vô gia cư |  | 0.5d | 2026-04-14 13:30 A | 2026-04-15 08:00 A | 46 | 100% | 2026-04-15 13:30 | 2026-04-16 08:00 | 0.5d | Gia Hân; Khánh Huyền; Khánh Linh; Ngọc Phượng; Phương Nguyên; Quỳnh Trâm; Thu Thảo; Yến Vy | 32h | 32h |  |  |  |
| 48 | 6 | **Tổng kết dự án** |  | 1.25d | 2026-04-15 08:00 A | 2026-04-16 10:00 A | 40 | 100% | 2026-04-16 08:00 | 2026-04-17 10:00 | 1.25d |  | 62h | 62h |  |  |  |
| 49 | 6.1 | **Tổng hợp kết quả dự án** |  | 0.5d | 2026-04-15 08:00 A | 2026-04-15 13:30 A |  | 100% | 2026-04-16 08:00 | 2026-04-16 13:30 | 0.5d |  | 24h | 24h |  |  |  |
| 50 | 6.1.1 | Tổng hợp doanh thu và chi phí |  | 0.5d | 2026-04-15 08:00 A | 2026-04-15 13:30 A |  | 100% | 2026-04-16 08:00 | 2026-04-16 13:30 | 0.5d | Khánh Huyền; Ngọc Phượng; Thu Thảo | 12h | 12h |  |  |  |
| 51 | 6.1.2 | Tổng hợp hình ảnh và dữ liệu dự án |  | 0.5d | 2026-04-15 08:00 A | 2026-04-15 13:30 A | 50SS | 100% | 2026-04-16 08:00 | 2026-04-16 13:30 | 0.5d | Khánh Linh; Quỳnh Trâm; Yến Vy | 12h | 12h |  |  |  |

| ID | WBS | Task | Duration | Start | Finish | Predecessors | Complete | Remaining | Baseline start | Baseline finish | Baseline duration | Total slack | Resources | Work | Actual work |
| --- | --- | --- | --- | --- | --- | --- | --- | --- | --- | --- | --- | --- | --- | --- | --- |
| 52 | 6.2 | **Đánh giá dự án** | 0.5d | 2026-04-15 13:30 A | 2026-04-16 08:00 A | 49 | 100% |  | 2026-04-16 13:30 | 2026-04-17 08:00 | 0.5d |  |  | 34h | 34h |
| 53 | 6.2.1 | Họp nhóm đánh giá kết quả | 0.25d | 2026-04-15 13:30 A | 2026-04-15 15:30 A |  | 100% |  | 2026-04-16 13:30 | 2026-04-16 15:30 | 0.25d |  | Gia Hân; Khánh Huyền; Khánh Linh; Ngọc Phượng; Phương Nguyên; Quỳnh Trâm; Thu Thảo; Yến Vy; GV.Phạm Thị Thanh Tâm | 18h | 18h |
| 54 | 6.2.2 | Thu thập feedback và rút kinh nghiệm | 0.25d | 2026-04-15 15:30 A | 2026-04-16 08:00 A | 53 | 100% |  | 2026-04-16 15:30 | 2026-04-17 08:00 | 0.25d |  | Gia Hân; Khánh Huyền; Khánh Linh; Ngọc Phượng; Phương Nguyên; Quỳnh Trâm; Thu Thảo; Yến Vy | 16h | 16h |
| 55 | 6.3 | **Chuẩn bị báo cáo** | 0.25d | 2026-04-16 08:00 A | 2026-04-16 10:00 A | 52 | 100% |  | 2026-04-17 08:00 | 2026-04-17 10:00 | 0.25d |  |  | 4h | 4h |
| 56 | 6.3.1 | Phân chia nhiệm vụ làm báo cáo | 0.25d | 2026-04-16 08:00 A | 2026-04-16 10:00 A |  | 100% |  | 2026-04-17 08:00 | 2026-04-17 10:00 | 0.25d |  | Khánh Huyền | 2h | 2h |
| 57 | 6.3.2 | Phân chia nhiệm vụ làm video | 0.25d | 2026-04-16 08:00 A | 2026-04-16 10:00 A | 56SS | 100% |  | 2026-04-17 08:00 | 2026-04-17 10:00 | 0.25d |  | Khánh Linh | 2h | 2h |
| 58 | 7 | **Hoàn thiện và nộp bài** | 4.5d | 2026-04-16 10:00 A | 2026-04-20 15:30 | 48 | 15% | 3.81d | 2026-04-17 10:00 | 2026-04-21 15:30 | 4.5d | 0d |  | 154h | 44.16h |
| 59 | 7.1 | **Thực hiện báo cáo** | 1.75d | 2026-04-16 10:00 A | 2026-04-18 08:00 |  | 39% | 1.06d | 2026-04-17 10:00 | 2026-04-19 08:00 | 1.75d | 0d |  | 112h | 44.16h |
| 60 | 7.1.1 | Viết báo cáo Word | 1d | 2026-04-16 10:00 A | 2026-04-17 10:00 |  | 69% | 0.31d | 2026-04-17 10:00 | 2026-04-18 10:00 | 1d | 0d | Gia Hân; Khánh Huyền; Khánh Linh; Ngọc Phượng; Phương Nguyên; Quỳnh Trâm; Thu Thảo; Yến Vy | 64h | 44.16h |
| 61 | 7.1.2 | Chỉnh sửa nội dung báo cáo | 0.75d | 2026-04-17 10:00 | 2026-04-18 08:00 | 60 |  |  | 2026-04-18 10:00 | 2026-04-19 08:00 | 0.75d | 0d | Gia Hân; Khánh Huyền; Khánh Linh; Ngọc Phượng; Phương Nguyên; Quỳnh Trâm; Thu Thảo; Yến Vy | 48h |  |
| 62 | 7.2 | **Thực hiện video dự án** | 2d | 2026-04-18 08:00 | 2026-04-20 08:00 | 59 |  |  | 2026-04-19 08:00 | 2026-04-21 08:00 | 2d | 0d |  | 32h |  |
| 63 | 7.2.1 | Dựng video tổng kết | 1d | 2026-04-18 08:00 | 2026-04-19 08:00 |  |  |  | 2026-04-19 08:00 | 2026-04-20 08:00 | 1d | 0d | Quỳnh Trâm; Yến Vy | 16h |  |
| 64 | 7.2.2 | Chỉnh sửa video | 1d | 2026-04-19 08:00 | 2026-04-20 08:00 | 63 |  |  | 2026-04-20 08:00 | 2026-04-21 08:00 | 1d | 0d | Quỳnh Trâm; Yến Vy | 16h |  |
| 65 | 7.3 | **Nộp bài** | 0.75d | 2026-04-20 08:00 | 2026-04-20 15:30 | 62 |  |  | 2026-04-21 08:00 | 2026-04-21 15:30 | 0.75d | 0d |  | 10h |  |
| 66 | 7.3.1 | Kiểm tra nội dung cuối cùng | 0.5d | 2026-04-20 08:00 | 2026-04-20 13:30 |  |  |  | 2026-04-21 08:00 | 2026-04-21 13:30 | 0.5d | 0d | Khánh Huyền; Khánh Linh | 8h |  |
| 67 | 7.3.2 | Nộp bài | 0.25d | 2026-04-20 13:30 | 2026-04-20 15:30 | 66 |  |  | 2026-04-21 13:30 | 2026-04-21 15:30 | 0.25d | 0d | Khánh Huyền | 2h |  |
